# WBS - E-COMMERCE BRAND FASHION LOKAL

Schedule from MS Project, 2023-04-03 to 2023-10-09, costs in Rp.
Grizli777

## Calendars

- Standard: Mon-Fri 08:00-12:00, 13:00-17:00; Sat-Sun off.

## Resources

| Resource | Rate |
| --- | --- |
| Manajer Proyek | 17755.6 |
| Ketua Proyek | 15625 |
| Analyst Proyek | 11718.8 |
| Programmer | 9375 |
| Dokumentasi Proyek | 4687.5 |
| Domain dan hosting website | 1500000 |
| Template atau tema website | 500000 |
| Lisensi dan biaya plugin | 1000000 |
| Konten untuk website (text dan foto) | 2000000 |
| Jasa fotografer dan model baju | 3000000 |
| Jasa SEO untuk optimasi website | 500000 |
| ATK (Alat Tulis Kantor) | 1000000 |
| Modem internet dan router | 2000000 |
| Biaya listrik bulanan | 1500000 |
| Perangkat elektronik | 5000000 |

## Schedule

| ID | WBS | Task | Type | Duration | Start | Finish | Predecessors | Total slack | Free slack | Constraint | Resources | Work | Cost |
| --- | --- | --- | --- | --- | --- | --- | --- | --- | --- | --- | --- | --- | --- |
| 1 | 1 | **Proyek E-Commerce Brand Fashion Lokal** |  | 136d | 2023-04-03 | 2023-10-09 |  | -2d | 0d |  |  | 1335.97h | 14,606,335.12 |
| 2 | 1.1 | **Persiapan** |  | 7d | 2023-04-03 | 2023-04-11 |  | -2d | 0d |  |  | 37.89h | 672,725.12 |
| 3 | 1.1.1 | Meeting dan wawancara dengan client membahas tentang proyek dan membuat kesepakatan |  | 3d | 2023-04-03 | 2023-04-05 |  | -2d | 0d |  | Manajer Proyek | 24h | 426,135 |
| 4 | 1.1.2 | Pembentukan Tim Proyek beserta tugasnya |  | 1d | 2023-04-06 | 2023-04-06 | 3 | -2d | 0d |  | Manajer Proyek | 8h | 142,045 |
| 5 | 1.1.3 | Penjadwalan Proyek dan anggaran |  | 4d | 2023-04-06 | 2023-04-11 | 4SS | -2d | 0d |  | Manajer Proyek [18.4%] | 5.89h | 104,545.12 |
| 6 | 1.2 | **Identifikasi** |  | 5d | 2023-04-12 | 2023-04-18 |  | -2d | 0d |  |  | 50.08h | 810,885 |
| 7 | 1.2.1 | Identifikasi Kebutuhan dan Preferensi Klien |  | 3d | 2023-04-12 | 2023-04-14 | 5 | -2d | 0d |  | Ketua Proyek | 24h | 375,000 |
| 8 | 1.2.2 | Identifikasi Stakeholder |  | 3d | 2023-04-12 | 2023-04-14 | 7SS | -2d | 0d |  | Manajer Proyek | 24h | 426,135 |
| 9 | 1.2.3 | **Dokumentasi** |  | 2d | 2023-04-14 | 2023-04-18 |  | -2d | 0d |  |  | 2.08h | 9,750 |
| 10 | 1.2.3.1 | Pembuatan dokumentasi dari hasil identifikasi |  | 2d | 2023-04-17 | 2023-04-18 | 8 | -2d | 0d |  | Dokumentasi Proyek [13%] | 2.08h | 9,750 |
| 11 | 1.2.3.2 | Penanda tanganan proyek oleh client | milestone | 0d | 2023-04-14 | 2023-04-14 | 10 | -2d | 0d | must finish on 2023-04-14 | Ketua Proyek |  |  |
| 12 | 1.3 | **Analisis dan desain sistem** |  | 35d | 2023-04-17 | 2023-06-02 |  | 0d |  |  |  | 320h | 3,906,250 |
| 13 | 1.3.1 | Analisa fitur dan fungsi website |  | 10d | 2023-04-17 | 2023-04-28 | 11 | 0d |  |  | Analyst Proyek | 80h | 937,500 |
| 14 | 1.3.2 | Analisa kompetitor |  | 5d | 2023-05-01 | 2023-05-05 | 13 | 0d |  |  | Analyst Proyek | 40h | 468,750 |
| 15 | 1.3.3 | Analisa Manajemen Resiko |  | 5d | 2023-05-01 | 2023-05-05 | 14SS | 0d |  |  | Ketua Proyek | 40h | 625,000 |
| 16 | 1.3.4 | Analisa kebutuhan sistem |  | 5d | 2023-05-08 | 2023-05-12 | 15 | 0d |  |  | Analyst Proyek | 40h | 468,750 |
| 17 | 1.3.5 | **Desain sistem** |  | 15d | 2023-05-15 | 2023-06-02 |  | 0d |  |  |  | 120h | 1,406,250 |
| 18 | 1.3.5.1 | Membuat Usecase diagram |  | 3d | 2023-05-15 | 2023-05-17 | 16 | 0d |  |  | Analyst Proyek | 24h | 281,250 |
| 19 | 1.3.5.2 | Membuat Activity diagram |  | 3d | 2023-05-18 | 2023-05-22 | 18 | 0d |  |  | Analyst Proyek | 24h | 281,250 |
| 20 | 1.3.5.3 | Membuat sequence diagram |  | 3d | 2023-05-23 | 2023-05-25 | 19 | 0d |  |  | Analyst Proyek | 24h | 281,250 |
| 21 | 1.3.5.4 | Membuat class diagram |  | 3d | 2023-05-26 | 2023-05-30 | 20 | 0d |  |  | Analyst Proyek | 24h | 281,250 |
| 22 | 1.3.5.5 | Membuat Entity Relationship Diagram ERD |  | 3d | 2023-05-31 | 2023-06-02 | 21 | 0d |  |  | Analyst Proyek | 24h | 281,250 |
| 23 | 1.3.5.6 | Penyelesaian desain sistem | milestone | 0d | 2023-06-02 | 2023-06-02 | 22FF | 0d |  | must finish on 2023-06-02 | Analyst Proyek [34%] |  |  |
| 24 | 1.4 | **Implementasi Desain** |  | 25d | 2023-06-05 | 2023-07-07 |  | 0d |  |  |  | 240h | 2,156,250 |
| 25 | 1.4.1 | Membuat Information Architecture berupa sitemap |  | 5d | 2023-06-05 | 2023-06-09 | 22 | 0d |  |  | Analyst Proyek | 40h | 468,750 |

| ID | WBS | Task | Type | Duration | Start | Finish | Predecessors | Total slack | Constraint | Resources | Work | Cost |
| --- | --- | --- | --- | --- | --- | --- | --- | --- | --- | --- | --- | --- |
| 26 | 1.4.2 | **Membuat Desain User Interface** |  | 15d | 2023-06-05 | 2023-06-23 |  | 0d |  |  | 120h | 1,125,000 |
| 27 | 1.4.2.1 | Wireframe |  | 5d | 2023-06-05 | 2023-06-09 | 25SS | 0d |  | Programmer | 40h | 375,000 |
| 28 | 1.4.2.2 | High fidelity design |  | 10d | 2023-06-12 | 2023-06-23 | 27 | 0d |  | Programmer | 80h | 750,000 |
| 29 | 1.4.3 | Membuat usability testing |  | 5d | 2023-06-26 | 2023-06-30 | 28 | 0d |  | Programmer | 40h | 375,000 |
| 30 | 1.4.4 | Dokumentasi dan penyerahan terhadap client |  | 5d | 2023-07-03 | 2023-07-07 | 29 | 0d |  | Dokumentasi Proyek | 40h | 187,500 |
| 31 | 1.4.5 | Penyelesaian implementasi desain | milestone | 0d | 2023-07-07 | 2023-07-07 | 30FF | 0d | must finish on 2023-07-07 | Dokumentasi Proyek [13%] |  |  |
| 32 | 1.5 | **Programming** |  | 35d | 2023-07-10 | 2023-08-25 |  | 0d |  |  | 320h | 2,812,500 |
| 33 | 1.5.1 | Programming frontend |  | 15d | 2023-07-10 | 2023-07-28 | 30 | 0d |  | Programmer | 120h | 1,125,000 |
| 34 | 1.5.2 | Programming backend |  | 15d | 2023-07-31 | 2023-08-18 | 33 | 0d |  | Programmer | 120h | 1,125,000 |
| 35 | 1.5.3 | Dokumentasi Program Website |  | 5d | 2023-08-21 | 2023-08-25 | 34 | 0d |  | Dokumentasi Proyek; Programmer [24%] | 80h | 562,500 |
| 36 | 1.5.4 | Penyelesaian programming | milestone | 0d | 2023-08-25 | 2023-08-25 | 35FF | 0d | must finish on 2023-08-25 | Dokumentasi Proyek [13%] |  |  |
| 37 | 1.6 | **Maintenance** |  | 26d | 2023-08-28 | 2023-10-02 |  | 0d |  |  | 288h | 3,350,000 |
| 38 | 1.6.1 | **Controling** |  | 8d | 2023-08-28 | 2023-09-06 |  | 0d |  |  | 88h | 975,000 |
| 39 | 1.6.1.1 | Kelayakan Teknis |  | 4d | 2023-08-28 | 2023-08-31 | 35 | 0d |  | Analyst Proyek | 32h | 375,000 |
| 40 | 1.6.1.2 | Keamanan |  | 3d | 2023-09-01 | 2023-09-05 | 39 | 0d |  | Programmer | 24h | 225,000 |
| 41 | 1.6.1.3 | Ketersediaan |  | 2d | 2023-09-01 | 2023-09-04 | 40SS | 0d |  | Analyst Proyek | 16h | 187,500 |
| 42 | 1.6.1.4 | Konten |  | 2d | 2023-09-05 | 2023-09-06 | 41 | 0d | finish no earlier than 2023-04-03 | Analyst Proyek | 16h | 187,500 |
| 43 | 1.6.2 | **Testing dan Delivering** |  | 18d | 2023-09-07 | 2023-10-02 |  | 0d |  |  | 200h | 2,375,000 |
| 44 | 1.6.2.1 | Uji Fungsionalitas |  | 2d | 2023-09-07 | 2023-09-08 | 42 | 0d |  | Analyst Proyek; Programmer | 32h | 337,500 |
| 45 | 1.6.2.2 | Pengujian Kinerja dan Keamanan |  | 3d | 2023-09-11 | 2023-09-13 | 44 | 0d |  | Programmer | 24h | 225,000 |
| 46 | 1.6.2.3 | Pengujian User Acceptance |  | 5d | 2023-09-14 | 2023-09-20 | 45 | 0d |  | Ketua Proyek | 40h | 625,000 |
| 47 | 1.6.2.4 | Delivering |  | 3d | 2023-09-21 | 2023-09-25 | 46 | 0d |  | Ketua Proyek | 24h | 375,000 |
| 48 | 1.6.2.5 | Pelatihan dan Dokumentasi |  | 5d | 2023-09-26 | 2023-10-02 | 47 | 0d |  | Dokumentasi Proyek; Ketua Proyek [11%] | 80h | 812,500 |
| 49 | 1.6.2.6 | Penyelesaian testing dan delivering | milestone | 0d | 2023-10-02 | 2023-10-02 | 48FF | 0d | must finish on 2023-10-02 | Dokumentasi Proyek [13%] |  |  |

| ID | WBS | Task | Type | Duration | Start | Finish | Predecessors | Total slack | Constraint | Resources | Work | Cost |
| --- | --- | --- | --- | --- | --- | --- | --- | --- | --- | --- | --- | --- |
| 50 | 1.7 | **Reporting** |  | 5d | 2023-10-03 | 2023-10-09 |  | 0d |  |  | 80h | 897,725 |
| 51 | 1.7.1 | Membuat Laporan Proyek Akhir |  | 5d | 2023-10-03 | 2023-10-09 | 48 | 0d |  | Dokumentasi Proyek; Manajer Proyek | 80h | 897,725 |
| 52 | 1.7.2 | Penyelesaian laporan proyek akhir | milestone | 0d | 2023-10-09 | 2023-10-09 | 51FF | 0d | must finish on 2023-10-09 | Dokumentasi Proyek [13%] |  |  |
